# Gantt_chart

Schedule from MS Project, 2008-01-03 to 2008-04-01, costs in $, A marks actual dates.
Augsburg College

## Calendars

- Standard: Mon-Fri 08:00-12:00, 13:00-17:00; Sat-Sun off.

## Resources

| Resource | Rate |
| --- | --- |
| 1 | 1 |

## Schedule

| ID | WBS | Task | Type | Duration | Start | Finish | Predecessors | Complete | Remaining | Total slack | Free slack | Constraint | Resources | Work | Actual work | Cost | Actual cost |
| --- | --- | --- | --- | --- | --- | --- | --- | --- | --- | --- | --- | --- | --- | --- | --- | --- | --- |
| 1 | 1 | **نصب، راه اندازی و بهره برداری از یک سامانه پیام رسان اجتماعی** |  | 63.4d | 2008-01-03 A | 2008-04-01 |  | 72% | 17.82d | 0d |  |  |  | 746h | 544h | 170,644 | 155,080.5 |
| 2 | 1.1 | **sprint 1** |  | 17d | 2008-01-03 A | 2008-01-28 |  | 80% | 3.47d | 1d |  |  |  | 98h | 78h | 70,220 | 69,000 |
| 3 | 1.1.1 | شروع فاز عملی پروژه |  | 2.5d | 2008-01-03 | 2008-01-07 |  |  |  | 15.5d | 14.5d |  | 1 | 20h |  | 20 |  |
| 4 | 1.1.2 | **زیرساخت پردازشی** |  | 17d | 2008-01-03 A | 2008-01-28 |  | 99% | 0d | 1d |  |  |  | 78h | 78h | 70,200 | 69,000 |
| 5 | 1.1.2.1 | خرید زیرساخت پردازشی |  | 2.62d | 2008-01-03 A | 2008-01-07 A |  | 100% |  |  |  |  |  | 21h | 21h | 20,000 | 20,000 |
| 6 | 1.1.2.2 | **سرویس دهنده** |  | 6.25d | 2008-01-03 A | 2008-01-11 A |  | 100% |  |  |  |  |  | 22h | 22h | 44,000 | 44,000 |
| 7 | 1.1.2.2.1 | تامین سرویس دهنده (سرور) |  | 1.5d | 2008-01-03 A | 2008-01-04 A |  | 100% |  |  |  |  |  | 12h | 12h | 35,000 | 35,000 |
| 8 | 1.1.2.2.2 | **پهنای باند سرویس دهنده** |  | 1.25d | 2008-01-10 A | 2008-01-11 A |  | 100% |  |  |  |  |  | 10h | 10h | 9,000 | 9,000 |
| 9 | 1.1.2.2.2.1 | تامین عرض باند سرویس دهنده |  | 1.25d | 2008-01-10 A | 2008-01-11 A | 7 | 100% |  |  |  |  |  | 10h | 10h | 9,000 | 9,000 |
| 10 | 1.1.2.3 | **خدمت افزار های زیرساخت پردازشی** |  | 9d | 2008-01-15 A | 2008-01-28 |  | 99% | 0d | 1d |  |  |  | 35h | 35h | 6,200 | 5,000 |
| 11 | 1.1.2.3.1 | نصب خدمت افزار های زیرساخت پردازشی |  | 2.88d | 2008-01-15 A | 2008-01-17 A | 5, 7, 8, 9 | 100% |  |  |  |  |  | 23h | 23h | 3,000 | 3,000 |
| 12 | 1.1.2.3.2 | تنظیم و راه اندازی خدمت افزار های زیرساخت پردازشی |  | 1.5d | 2008-01-18 A | 2008-01-21 A | 11 | 100% |  |  |  |  |  | 12h | 12h | 2,000 | 2,000 |
| 13 | 1.1.2.3.3 | آماده شدن زیرساخت پردازشی | milestone | 0d | 2008-01-28 | 2008-01-28 | 12, 3, 5, 6, 7, 8, 9, 11 |  |  | 1d |  | start no earlier than 2008-01-28 |  |  |  | 1,200 |  |
| 14 | 1.2 | **sprint 2** |  | 10d | 2008-01-29 A | 2008-02-11 | 2 | 84% | 1.62d | 35.4d |  |  |  | 71h | 62h | 12,200 | 10,100 |
| 15 | 1.2.1 | **شبکه ارتباطی** |  | 10d | 2008-01-29 A | 2008-02-11 |  | 84% | 1.62d | 35.4d |  |  |  | 71h | 62h | 12,200 | 10,100 |
| 16 | 1.2.1.1 | تامین شبکه ارتباطی |  | 3.75d | 2008-01-29 A | 2008-02-01 |  | 80% | 0.75d | 41.65d |  |  |  | 30h | 24h | 9,000 | 7,200 |
| 17 | 1.2.1.2 | راه اندازی شبکه ارتباطی |  | 2.5d | 2008-02-01 A | 2008-02-05 A | 16 | 100% |  |  |  |  |  | 20h | 20h | 2,000 | 2,000 |
| 18 | 1.2.1.3 | تنظیم شبکه ارتباطی |  | 3d | 2008-02-07 A | 2008-02-11 | 17 | 75% | 0.75d | 19d | 15d |  |  | 21h | 18h | 1,200 | 900 |
| 19 | 1.3 | **sprint 3** |  | 22.5d | 2008-02-12 A | 2008-03-13 |  | 64% | 8.05d | 12.2d | 10.5d |  |  | 209h | 165h | 67,070 | 61,885 |
| 20 | 1.3.1 | **خدمت افزار پیام رسان** |  | 22.5d | 2008-02-12 A | 2008-03-13 |  | 64% | 8.05d | 12.2d |  |  |  | 209h | 165h | 67,070 | 61,885 |
| 21 | 1.3.1.1 | خرید خدمت افزار پیام رسان |  | 0.5d | 2008-02-12 A | 2008-02-12 A | 2, 14 | 100% |  |  |  |  |  | 4h | 4h | 45,000 | 45,000 |
| 22 | 1.3.1.2 | آموزش خدمت افزار پیام رسان |  | 2.62d | 2008-02-15 A | 2008-02-19 A | 21 | 100% |  |  |  |  |  | 21h | 21h | 6,000 | 6,000 |
| 23 | 1.3.1.3 | نصب خدمت افزار پیام رسان |  | 2.5d | 2008-02-15 A | 2008-02-19 A | 21 | 100% |  |  |  |  |  | 20h | 20h | 2,000 | 2,000 |
| 24 | 1.3.1.4 | تنظیم و راه اندازی حدمت افزار پیام رسان |  | 3.25d | 2008-02-21 A | 2008-02-26 A | 21, 23 | 100% |  |  |  |  |  | 26h | 26h | 1,000 | 1,000 |
| 25 | 1.3.1.5 | آماده شن خدمت افزار |  | 1.5d | 2008-02-28 A | 2008-03-03 | 21, 22, 23, 24 |  | 1.5d | 20.2d |  |  |  | 12h |  | 500 |  |

| ID | WBS | Task | Type | Duration | Start | Finish | Predecessors | Complete | Remaining | Total slack | Free slack | Work | Actual work | Cost | Actual cost |
| --- | --- | --- | --- | --- | --- | --- | --- | --- | --- | --- | --- | --- | --- | --- | --- |
| 26 | 1.3.1.6 | **آزمایش خدمت افزار پیام رسان** |  | 10.5d | 2008-02-28 A | 2008-03-13 |  | 45% | 5.73d | 12.2d |  | 82h | 60h | 5,570 | 2,785 |
| 27 | 1.3.1.6.1 | ارزیابی امنیتی خدمت افزار پیام رسان اجتماعی |  | 6d | 2008-02-28 A | 2008-03-06 | 24 | 50% | 3d | 4.5d | 3d | 30h | 24h | 4,050 | 2,025 |
| 28 | 1.3.1.6.2 | ارزیابی کارایی خدمت افزار پیام رسان اجتماعی |  | 9d | 2008-02-28 A | 2008-03-11 | 24 | 50% | 4.5d | 1.5d | 0d | 40h | 36h | 1,520 | 760 |
| 29 | 1.3.1.6.3 | در اختیار داشتن خدمت افزار مطمئن |  | 1.5d | 2008-03-11 A | 2008-03-13 | 27, 28 |  | 1.5d | 12.2d |  | 12h |  |  |  |
| 30 | 1.3.1.7 | **کاربران خدمت افزار** |  | 19.5d | 2008-02-15 A | 2008-03-13 |  | 81% | 3.71d | 12.2d |  | 44h | 34h | 7,000 | 5,100 |
| 31 | 1.3.1.7.1 | نیازسنجی کاربران خدمت افزار |  | 3.75d | 2008-02-15 A | 2008-02-20 A | 21 | 100% |  |  |  | 30h | 30h | 4,500 | 4,500 |
| 32 | 1.3.1.7.2 | دسته بندی کاربران خدمت افزار |  | 1d | 2008-03-12 A | 2008-03-12 | 31 | 50% | 0.5d | 0.5d | 0d | 10h | 4h | 1,200 | 600 |
| 33 | 1.3.1.7.3 | تحویل خدمت افزار |  | 0.5d | 2008-03-12 A | 2008-03-13 | 31, 32 |  | 0.5d | 12.2d |  | 4h |  | 1,300 |  |
| 34 | 1.4 | **sprint 4** |  | 35.4d | 2008-02-12 A | 2008-04-01 |  | 77% | 8.25d | 0d |  | 368h | 239h | 21,154 | 14,095.5 |
| 35 | 1.4.1 | **سامانه پیام رسان اجتماعی** |  | 35.4d | 2008-02-12 A | 2008-04-01 |  | 77% | 8.25d | 0d |  | 368h | 239h | 21,154 | 14,095.5 |
| 36 | 1.4.1.1 | بهره برداری از سامانه پیام رسان اجتماعی |  | 2.88d | 2008-02-12 A | 2008-02-14 A | 18 | 100% |  |  |  | 23h | 23h | 500 | 500 |
| 37 | 1.4.1.2 | آماده بودن نسخه های اولیه برای ارائه به کاربران | milestone | 0d | 2008-02-21 A | 2008-02-21 | 36 | 75% | 0d | 27.4d |  |  |  |  |  |
| 38 | 1.4.1.3 | ارزیابی امنیت پیام رسان اجتماعی |  | 5d | 2008-02-22 A | 2008-02-28 A | 18, 37 | 100% |  |  |  | 40h | 40h | 6,000 | 6,000 |
| 39 | 1.4.1.4 | تنظیم امنیتی پیام رسان اجتماعی |  | 4d | 2008-03-10 A | 2008-03-13 | 36, 38, 40, 18 | 50% | 2d | 12.4d |  | 38h | 16h | 1,300 | 650 |
| 40 | 1.4.1.5 | طراحی تنظیمات امنیتی پیام رسان اجتماعی |  | 4.62d | 2008-03-04 A | 2008-03-10 | 38, 18 | 86% | 0.62d | 1.38d | 0d | 37h | 32h | 1,600 | 1,376 |
| 41 | 1.4.1.6 | ارزیابی کارایی پیام رسان اجتماعی |  | 6.12d | 2008-02-22 A | 2008-03-03 A | 36, 18 | 100% |  |  |  | 49h | 49h | 1,654 | 1,654 |
| 42 | 1.4.1.7 | **کاربرد افزرا پیام رسان** |  | 27.4d | 2008-02-22 A | 2008-04-01 | 36 | 60% | 10.83d | 0d |  | 181h | 79h | 10,100 | 3,915.5 |
| 43 | 1.4.1.7.1 | **ایجاد کاربردافزار پیام رسان** |  | 27.4d | 2008-02-22 A | 2008-04-01 |  | 60% | 10.83d | 0d |  | 181h | 79h | 10,100 | 3,915.5 |
| 44 | 1.4.1.7.1.1 | **تحلیل کاربرد افزار پیام رسان** |  | 3.7d | 2008-03-26 A | 2008-03-31 |  | 13% | 3.24d | 0.7d |  | 104h | 6h | 6,700 | 655 |
| 45 | 1.4.1.7.1.1.1 | ارزیابی امنیتی کاربردافزار پیام رسان اجتماعی |  | 2d | 2008-03-26 A | 2008-03-27 | 48, 49 | 15% | 1.7d | 2.4d |  | 39h | 2.4h | 300 | 45 |
| 46 | 1.4.1.7.1.1.2 | آزمایش کاربردافزار پیام رسان اجتماعی |  | 2d | 2008-03-26 A | 2008-03-27 | 49 | 8% | 1.85d | 0d |  | 38h | 1.2h | 5,000 | 400 |
| 47 | 1.4.1.7.1.1.3 | ارزیابی کارایی کاربردافزار پیام رسان اجتماعی |  | 2d | 2008-03-27 A | 2008-03-31 | 46 | 15% | 1.7d | 0d |  | 27h | 2.4h | 1,400 | 210 |
| 48 | 1.4.1.7.1.2 | طراحی کاربردافزار پیام رسان |  | 5.5d | 2008-02-22 A | 2008-02-29 |  | 91% | 0.5d | 3.62d |  | 44h | 40h | 1,550 | 1,410.5 |
| 49 | 1.4.1.7.1.3 | پیاده سازی کاربردافزار پیام رسان |  | 4.12d | 2008-02-29 A | 2008-03-06 A | 48 | 100% |  |  |  | 33h | 33h | 1,850 | 1,850 |
| 50 | 1.4.1.7.1.4 | اتمام مراحل اجرایی |  | 0.7d | 2008-03-27 A | 2008-04-01 | 19, 47, 48, 49 |  | 0.7d | 0d |  |  |  |  |  |
| 51 | 1.5 | sprint 5 |  | 2d | 2008-01-03 | 2008-01-04 |  |  |  | 61.4d |  |  |  |  |  |
