# Project Management Workplan

Schedule from MS Project, 2016-04-12 to 2016-08-01, status date 2012-04-20.

## Calendars

- Standard: Mon-Fri 08:00-12:00, 13:00-17:00; Sat-Sun off.

## Schedule

| ID | WBS | Task | Type | Duration | Start | Finish | Predecessors | Total slack | Free slack | Text3 | Text4 | Text5 |
| --- | --- | --- | --- | --- | --- | --- | --- | --- | --- | --- | --- | --- |
| 1 | 2 | **Initiation Phase** |  | 13d | 2016-04-12 | 2016-04-28 |  | 0.5d |  | Mfg and Tech | Internal Mfg | Guadalajara |
| 2 | 1.1 | **Requirements Gathering & Analysis** |  | 4d | 2016-04-12 | 2016-04-15 |  | 0.5d |  |  |  |  |
| 3 | 1.1.1 | Define process for gathering requirements |  | 1d | 2016-04-12 | 2016-04-12 |  | 0.5d | 0d |  |  |  |
| 4 | 1.1.2 | Document project-stakeholder interviews |  | 1d | 2016-04-13 | 2016-04-13 | 3 | 0.5d | 0d |  |  |  |
| 5 | 1.1.3 | Analyze requirements |  | 1d | 2016-04-14 | 2016-04-14 | 4 | 0.5d | 0d |  |  |  |
| 6 | 1.1.4 | Create requirements document |  | 1d | 2016-04-15 | 2016-04-15 | 5 | 76d |  |  |  |  |
| 7 | 7 | **Project Charter Development** |  | 10d | 2016-04-15 | 2016-04-28 |  | 0.5d |  | Mfg and Tech | Internal Mfg | Guadalajara |
| 8 | 1.2.1 | **Business Case** |  | 2d | 2016-04-15 | 2016-04-18 |  | 0.5d |  |  |  |  |
| 9 | 1.2.1.1 | Document summary of business purpose justification |  | 2d | 2016-04-15 | 2016-04-18 | 5 | 75d |  |  |  |  |
| 10 | 1.2.1.2 | Define expected benefits |  | 2d | 2016-04-15 | 2016-04-18 | 5 | 0.5d | 0d |  |  |  |
| 11 | 1.2.2 | **Project Scope Definition (High Level)** |  | 5d | 2016-04-19 | 2016-04-25 |  | 0.5d |  |  |  |  |
| 12 | 1.2.2.1 | Define primary market research objectives |  | 3d | 2016-04-19 | 2016-04-21 | 10 | 0.5d | 0d |  |  |  |
| 13 | 1.2.2.2 | Define primary market research deliverables |  | 2d | 2016-04-22 | 2016-04-25 | 12 | 70d |  |  |  |  |
| 14 | 1.2.2.3 | Identify specific exclusions to scope |  | 2d | 2016-04-22 | 2016-04-25 | 12 | 0.5d | 0d |  |  |  |
| 15 | 1.2.3 | Establish high-level time, cost, and resource estimates |  | 2d | 2016-04-26 | 2016-04-27 | 14 | 68d |  |  |  |  |
| 16 | 1.2.4 | Establish list of key stakeholders |  | 2d | 2016-04-26 | 2016-04-27 | 14 | 0.5d | 0d |  |  |  |
| 17 | 1.2.5 | Document project charter |  | 1d | 2016-04-28 | 2016-04-28 | 16 | 0.5d | 0d |  |  |  |
| 18 | 1.2.6 | Project Charter Approval | milestone | 0d | 2016-04-28 | 2016-04-28 | 17 | 0.5d | 0d | Mfg and Tech | Internal Mfg | Guadalajara |
| 19 | 1.3 | Initiation Phase Approval | milestone | 0d | 2016-04-28 | 2016-04-28 | 18 | 0.5d | 0d |  |  |  |
| 21 | 2 | **Planning Phase** |  | 32.5d | 2016-04-29 | 2016-06-14 |  | 0.5d |  | Mfg and Tech | Internal Mfg | Guadalajara |
| 22 | 2.1 | **Project Plan Development** |  | 32.5d | 2016-04-29 | 2016-06-14 | 19 | 0.5d |  |  |  |  |
| 23 | 2.1.1 | **Scope Statement** |  | 4d | 2016-04-29 | 2016-05-04 |  | 0.5d | 0d |  |  |  |
| 24 | 2.1.1.1 | Create scope description (based on business objectives) |  | 2d | 2016-04-29 | 2016-05-02 | 19 | 23d |  |  |  |  |
| 25 | 2.1.1.2 | Define scope boundaries (both in and out of scope) |  | 2d | 2016-04-29 | 2016-05-02 | 19 | 0.5d | 0d |  |  |  |
| 26 | 2.1.1.3 | Define key project deliverables (including user-acceptable criteria) |  | 2d | 2016-05-03 | 2016-05-04 | 25 | 0.5d | 0d |  |  |  |

Notes:
- 1: Note: This template is for illustration purposes only. In the real world, project phases often overlap each other during the closedown of one phase and preparation for the next phase.
- 7: A Charter: / (1) helps Management understand what the project will deliver, its business justification, and a high level estimation of the time, cost and resources required / (2) serves as a commitment by Management to dedicate the time and resources necessary to prepare a more detailed, written "Project Plan" for formal funding approval; / (3) should be relatively brief -- averaging around 3-5 pages in length. / Note: Too much detail in the Charter can detract from a clear, concise business reason why Management should allow a project to go beyond the "Initiating" phase. There are also many unknowns at this stage of the ballgame that can make detailed time, cost and resource projections very risky. Projections in too much detail early on can contribute to serious cost and schedule overruns later in the project.
- 22: A written "Project Plan" (not a work plan schedule): / (1) is a formal, approved document used to manage and control project execution / (2) provides a detailed review of project time, cost, scope, resources, risk and other controls necessary for Management to approve all required funding and staffing / (3)is expected to change over time as more accurate information becomes available; hence, the importance of change control. / The Project Charter, which becomes part of the overall Project Plan, should remain relatively stable over time, and serve as Management's reference guide as to why the project exists.

| ID | WBS | Task | Duration | Start | Finish | Predecessors | Total slack | Free slack |
| --- | --- | --- | --- | --- | --- | --- | --- | --- |
| 27 | 2.1.2 | **Work Breakdown Structure (WBS)** | 4d | 2016-05-05 | 2016-05-10 |  | 0.5d |  |
| 28 | 2.1.2.1 | Create WBS to work-level execution | 2d | 2016-05-05 | 2016-05-06 | 26 | 0.5d | 0d |
| 29 | 2.1.2.2 | Define task dependencies (including predecessors/successors) | 2d | 2016-05-09 | 2016-05-10 | 28 | 0.5d | 0d |
| 30 | 2.1.3 | **Performance Baseline Measurement** | 2d | 2016-05-11 | 2016-05-12 |  | 0.5d |  |
| 31 | 2.1.3.1 | Create schedule baseline (with expected resource effort) | 1d | 2016-05-11 | 2016-05-11 | 29 | 0.5d | 0d |
| 32 | 2.1.3.2 | Define budget baseline (with schedule and cost assumptions) | 1d | 2016-05-12 | 2016-05-12 | 31 | 57d |  |
| 33 | 2.1.3.3 | Establish baseline tolerance thresholds (trigger change control) | 1d | 2016-05-12 | 2016-05-12 | 31 | 0.5d | 0d |
| 34 | 2.1.4 | **Procurement Planning (Research Vendor Selection)** | 8d | 2016-05-05 | 2016-05-16 |  | 21d |  |
| 35 | 2.1.4.1 | Analyze market conditions | 1d | 2016-05-05 | 2016-05-05 | 23 | 21d | 0d |
| 36 | 2.1.4.2 | Analyze make-or-buy findings | 2d | 2016-05-06 | 2016-05-09 | 35 | 21d | 0d |
| 37 | 2.1.4.3 | Select contract type | 1d | 2016-05-10 | 2016-05-10 | 36 | 21d | 0d |
| 38 | 2.1.4.4 | Develop procurement management plan | 2d | 2016-05-11 | 2016-05-12 | 37 | 21d | 0d |
| 39 | 2.1.4.5 | Develop statement of work | 2d | 2016-05-13 | 2016-05-16 | 38 | 21d | 20.5d |
| 40 | 2.1.5 | **Project Schedule Plan** | 2.5d | 2016-05-13 | 2016-05-17 |  | 0.5d |  |
| 41 | 2.1.5.1 | **Project Milestones (PMs)** | 0.5d | 2016-05-13 | 2016-05-13 |  | 0.5d |  |
| 42 | 2.1.5.1.1 | Define major milestones (alignment with deliverables) | 0.5d | 2016-05-13 | 2016-05-13 | 33 | 0.5d | 0d |
| 43 | 2.1.5.2 | **Project Scheduling Work Plan** | 2d | 2016-05-13 | 2016-05-17 |  | 0.5d |  |
| 44 | 2.1.5.2.1 | Define standard PM and approval gates | 0.5d | 2016-05-13 | 2016-05-13 | 42 | 56d |  |
| 45 | 2.1.5.2.2 | Document WBS, milestones, and deliverables (dates and resourcing) | 2d | 2016-05-13 | 2016-05-17 | 42 | 54.5d |  |
| 46 | 2.1.5.2.3 | Document schedule baseline | 1d | 2016-05-13 | 2016-05-16 | 42 | 0.5d | 0d |
| 47 | 2.1.6 | **Resource Management** | 2d | 2016-05-16 | 2016-05-18 |  | 0.5d |  |
| 48 | 2.1.6.1 | Name project team members (with roles and responsibilities) | 2d | 2016-05-16 | 2016-05-18 | 46 | 53.5d |  |
| 49 | 2.1.6.2 | Define all project stakeholders (with roles and project team liaison) | 2d | 2016-05-16 | 2016-05-18 | 46 | 53.5d |  |
| 50 | 2.1.6.3 | Create org chart: project team, sponsor, steering committee, stakeholders | 2d | 2016-05-16 | 2016-05-18 | 46 | 0.5d | 0d |

Notes:
- 28: WBS can ideally be completed at the fourth level of breakdown, but should not exceed five levels.
- 31: Base the schedule baseline on the time and resource effort needed to achieve project milestones and deliverables. A formal change control should be applied with a pre-determined threshold limit (e.g., 10% over original estimate requires formal Management approval before a new baseline can be established).
- 32: The Budget Baseline should be driven by the Schedule and other cost assumptions. A pre-determined threshold limit should also be defined (e.g., 10% over the original Budget requires formal Management approval before the new Baseline is allowed).
- 41: Recommend not more than 10 to 15 major milestones per project with an average duration of 60 days or less per milestone.

| ID | WBS | Task | Type | Duration | Start | Finish | Predecessors | Total slack | Free slack | Text3 | Text4 | Text5 | STD Reports Format |
| --- | --- | --- | --- | --- | --- | --- | --- | --- | --- | --- | --- | --- | --- |
| 51 | 2.1.7 | **Supporting PM Process Plans** |  | 19d | 2016-05-18 | 2016-06-14 |  | 0.5d |  |  |  |  |  |
| 52 | 2.1.7.1 | **Change Management** |  | 4d | 2016-05-18 | 2016-05-24 |  | 0.5d |  |  |  |  |  |
| 53 | 2.1.7.1.1 | Document change control procedure for budget and schedule baselines |  | 2d | 2016-05-18 | 2016-05-20 | 50 | 51.5d |  |  |  |  |  |
| 54 | 2.1.7.1.2 | Document change control for approved scope baseline |  | 2d | 2016-05-18 | 2016-05-20 | 50 | 0.5d | 0d |  |  |  |  |
| 55 | 2.1.7.1.3 | Document change control for systems modifications |  | 2d | 2016-05-20 | 2016-05-24 | 54 | 0.5d | 0d |  |  |  |  |
| 56 | 2.1.7.2 | **Risk Management** |  | 4d | 2016-05-24 | 2016-05-30 |  | 0.5d |  |  |  |  |  |
| 57 | 2.1.7.2.1 | Document risk process: prioritization, mitigation, and contingency guidelines |  | 2d | 2016-05-24 | 2016-05-26 | 55 | 0.5d | 0d |  |  |  |  |
| 58 | 2.1.7.2.2 | Document risk assessment for scope, budget, and schedule baselines |  | 2d | 2016-05-26 | 2016-05-30 | 57 | 0.5d | 0d |  |  |  |  |
| 59 | 2.1.7.3 | **Issues Management** |  | 2d | 2016-05-30 | 2016-06-01 |  | 0.5d |  |  |  |  |  |
| 60 | 2.1.7.3.1 | Document issues process: prioritization, resolution, and tracking guidelines |  | 2d | 2016-05-30 | 2016-06-01 | 58 | 43.5d |  |  |  |  |  |
| 61 | 2.1.7.3.2 | Document formal 3-tiered escalation: project manager, sponsor, and executives |  | 2d | 2016-05-30 | 2016-06-01 | 58 | 0.5d | 0d |  |  |  |  |
| 62 | 2.1.7.4 | **Communication Plan** |  | 4d | 2016-06-01 | 2016-06-07 |  | 0.5d |  |  |  |  |  |
| 63 | 2.1.7.4.1 | Document guidelines: project updates and stakeholder collaboration |  | 2d | 2016-06-01 | 2016-06-03 | 61 | 0.5d | 0d |  |  |  |  |
| 64 | 2.1.7.4.2 | Document guidelines for document repository access and controls |  | 2d | 2016-06-01 | 2016-06-03 | 61 | 41.5d |  |  |  |  |  |
| 65 | 2.1.7.4.3 | Document standard project team and executive status report guidelines |  | 2d | 2016-06-03 | 2016-06-07 | 63 | 0.5d | 0d |  |  |  |  |
| 66 | 2.1.7.5 | **Quality Assurance and Control Plan** |  | 2d | 2016-06-07 | 2016-06-09 |  | 0.5d |  |  |  |  |  |
| 67 | 2.1.7.5.1 | Define criteria for user-acceptance testing (with checklist) |  | 2d | 2016-06-07 | 2016-06-09 | 65 | 37.5d |  |  |  |  |  |
| 68 | 2.1.7.5.2 | Define criteria for cost/benefit analysis |  | 2d | 2016-06-07 | 2016-06-09 | 65 | 37.5d |  |  |  |  |  |
| 69 | 2.1.7.5.3 | Define criteria and process for periodic stakeholder satisfaction survey |  | 2d | 2016-06-07 | 2016-06-09 | 65 | 37.5d |  |  |  |  |  |
| 70 | 2.1.7.5.4 | Define criteria for "Lessons Learned" (during closeout) |  | 2d | 2016-06-07 | 2016-06-09 | 65 | 0.5d | 0d |  |  |  |  |
| 71 | 2.1.7.6 | Create Draft Project Plan |  | 3d | 2016-06-09 | 2016-06-14 | 70 | 0.5d | 0d |  |  |  |  |
| 72 | 2.1.8 | Project Plan Approval | milestone | 0d | 2016-06-14 | 2016-06-14 | 71 | 0.5d | 0d | Mfg and Tech | Internal Mfg | Guadalajara |  |
| 73 | 2.2 | Planning Phase Approval | milestone | 0d | 2016-06-14 | 2016-06-14 | 72 | 0.5d | 0d |  |  |  |  |
| 75 | 3 | **Execution Phase** |  | 31d | 2016-06-14 | 2016-07-27 |  | 0.5d |  | Mfg and Tech | Internal Mfg | Guadalajara |  |
| 76 | 3.1 | **Brainstorming Marketing Idea** |  | 31d | 2016-06-14 | 2016-07-27 |  | 0.5d | 0d |  |  |  | MSP 2000 PLAN |
| 77 | 3.1.1 | **Prep Work** |  | 3.25d | 2016-06-14 | 2016-06-17 |  | 4.25d |  |  |  |  |  |
| 78 | 3.1.1.1 | Define objectives |  | 1d | 2016-06-14 | 2016-06-15 | 73 | 4.25d | 0d |  |  |  |  |
| 79 | 3.1.1.2 | Identify brainstorming team |  | 0.5d | 2016-06-15 | 2016-06-15 | 78 | 4.25d | 0d |  |  |  |  |
| 80 | 3.1.1.3 | Identify location |  | 0.25d | 2016-06-16 | 2016-06-16 | 79 | 4.25d | 0d |  |  |  |  |
| 81 | 3.1.1.4 | Develop agenda |  | 1d | 2016-06-16 | 2016-06-17 | 80 | 4.25d | 0d |  |  |  |  |
| 82 | 3.1.1.5 | Schedule facility |  | 0.25d | 2016-06-17 | 2016-06-17 | 81 | 4.25d | 0d |  |  |  |  |
| 83 | 3.1.1.6 | Arrange facilitator |  | 0.25d | 2016-06-17 | 2016-06-17 | 82 | 4.25d | 0d |  |  |  |  |

| ID | WBS | Task | Type | Duration | Start | Finish | Predecessors | Total slack | Free slack | Text3 | Text4 | Text5 |
| --- | --- | --- | --- | --- | --- | --- | --- | --- | --- | --- | --- | --- |
| 84 | 3.1.2 | **Brainstorming Session** |  | 5d | 2016-06-24 | 2016-07-01 |  | 4.25d |  |  |  |  |
| 85 | 3.1.2.1 | Analyze market condition |  | 0.5d | 2016-06-24 | 2016-06-27 | 83FS+5d | 4.25d | 0d |  |  |  |
| 86 | 3.1.2.2 | Identify risks |  | 1d | 2016-06-27 | 2016-06-28 | 85 | 4.25d | 0d |  |  |  |
| 87 | 3.1.2.3 | Select primary market research tool |  | 0.5d | 2016-06-28 | 2016-06-28 | 86 | 4.25d | 0d |  |  |  |
| 88 | 3.1.2.4 | Gather ideas |  | 1d | 2016-06-28 | 2016-06-29 | 87 | 4.25d | 0d |  |  |  |
| 89 | 3.1.2.5 | Analyze ideas |  | 0.5d | 2016-06-29 | 2016-06-30 | 88 | 4.25d | 0d |  |  |  |
| 90 | 3.1.2.6 | Develop research brief |  | 1d | 2016-06-30 | 2016-07-01 | 89 | 4.25d | 0d |  |  |  |
| 91 | 3.1.2.7 | Present to management |  | 0.5d | 2016-07-01 | 2016-07-01 | 90 | 4.25d | 3.75d |  |  |  |
| 92 | 3.1.3 | **Solicitation** |  | 12d | 2016-06-14 | 2016-06-30 |  | 0.5d |  |  |  |  |
| 93 | 3.1.3.1 | Define evaluation criteria |  | 1d | 2016-06-14 | 2016-06-15 | 39, 73 | 0.5d | 0d |  |  |  |
| 94 | 3.1.3.2 | Advertise Scope of Work (SOW) |  | 1d | 2016-06-15 | 2016-06-16 | 93 | 0.5d | 0d |  |  |  |
| 95 | 3.1.3.3 | Collect Proposals | milestone | 0d | 2016-06-30 | 2016-06-30 | 94FS+10d | 0.5d | 0d |  |  |  |
| 96 | 3.1.4 | **Source Selection (Research Vendor Selection)** |  | 5d | 2016-06-30 | 2016-07-07 |  | 0.5d |  |  |  |  |
| 97 | 3.1.4.1 | Evaluate proposals |  | 2d | 2016-06-30 | 2016-07-04 | 95 | 0.5d | 0d |  |  |  |
| 98 | 3.1.4.2 | Screen vendors |  | 2d | 2016-07-04 | 2016-07-06 | 97 | 0.5d | 0d |  |  |  |
| 99 | 3.1.4.3 | Negotiate contract |  | 1d | 2016-07-06 | 2016-07-07 | 98 | 0.5d | 0d |  |  |  |
| 100 | 3.1.4.4 | Select Vendor | milestone | 0d | 2016-07-07 | 2016-07-07 | 99 | 0.5d | 0d |  |  |  |
| 101 | 3.1.5 | **Primary Market Research Tool Development** |  | 14d | 2016-07-07 | 2016-07-27 |  | 0.5d |  |  |  |  |
| 102 | 3.1.5.1 | Identify method of survey (phone, in-person, Internet, magazines, etc.) |  | 1d | 2016-07-07 | 2016-07-08 | 100, 91 | 0.5d | 0d |  |  |  |
| 103 | 3.1.5.2 | Identify minimum number of samples |  | 0.5d | 2016-07-08 | 2016-07-08 | 102 | 0.5d | 0d |  |  |  |
| 104 | 3.1.5.3 | Identify test market |  | 1d | 2016-07-11 | 2016-07-11 | 103 | 0.5d | 0d |  |  |  |
| 105 | 3.1.5.4 | Identify demographics |  | 0.5d | 2016-07-12 | 2016-07-12 | 104 | 0.5d | 0d |  |  |  |
| 106 | 3.1.5.5 | Define questionnaire |  | 2d | 2016-07-12 | 2016-07-14 | 105 | 0.5d | 0d |  |  |  |
| 107 | 3.1.5.6 | Conduct research |  | 5d | 2016-07-14 | 2016-07-21 | 106 | 0.5d | 0d |  |  |  |
| 108 | 3.1.5.7 | Compile results |  | 2d | 2016-07-21 | 2016-07-25 | 107 | 0.5d | 0d |  |  |  |
| 109 | 3.1.5.8 | Generate report |  | 1d | 2016-07-25 | 2016-07-26 | 108 | 0.5d | 0d |  |  |  |
| 110 | 3.1.5.9 | Present report |  | 1d | 2016-07-26 | 2016-07-27 | 109 | 0.5d |  |  |  |  |
| 111 | 3.2 | Execution Phase Gateway Approval | milestone | 0d | 2016-07-27 | 2016-07-27 | 76 | 0.5d |  | Mfg and Tech | Internal Mfg | Guadalajara |

| ID | WBS | Task | Type | Duration | Start | Finish | Predecessors | Total slack | Constraint | Text3 | Text4 | Text5 |
| --- | --- | --- | --- | --- | --- | --- | --- | --- | --- | --- | --- | --- |
| 113 | 4 | **Closeout Phase** |  | 3d | 2016-07-28 | 2016-08-01 |  | 0d | start no earlier than 2016-07-28 | Mfg and Tech | Internal Mfg | Guadalajara |
| 114 | 4.1 | Contract Closeout |  | 1d | 2016-07-28 | 2016-07-28 |  | 2d |  |  |  |  |
| 115 | 4.2 | Launch project "Lessons Learned" review |  | 2d | 2016-07-28 | 2016-07-29 | 111 | 0d |  |  |  |  |
| 116 | 4.3 | **Establish process for archiving project data** |  | 1d | 2016-07-28 | 2016-07-28 | 111 | 2d |  |  |  |  |
| 117 | 4.3.1 | Archive documents |  | 1d | 2016-07-28 | 2016-07-28 | 111 | 2d |  |  |  |  |
| 118 | 4.4 | Conduct administrative closeout |  | 1d | 2016-08-01 | 2016-08-01 | 111, 115 | 0d |  |  |  |  |
| 119 | 4.5 | Closeout Phase Approval | milestone | 0d | 2016-08-01 | 2016-08-01 | 118 | 0d |  |  |  |  |
